task,start,end,group,progress,status,owner,deps,milestone
需求冻结,2025-08-04,2025-08-04,规划,100,done,产品,,milestone
技术方案评审,2025-08-05,2025-08-15,规划,100,done,架构组,需求冻结,
支付网关改造,2025-08-18,2025-09-26,后端,45,delayed,王猛,技术方案评审,
订单服务拆分,2025-08-18,2025-09-12,后端,90,active,李倩,技术方案评审,
风控规则引擎,2025-09-01,2025-10-10,后端,30,active,赵工,支付网关改造,
前端新版结算页,2025-09-08,2025-10-17,前端,25,active,周舟,订单服务拆分,
小程序适配,2025-09-22,2025-10-24,前端,10,active,周舟,前端新版结算页,
集成测试,2025-10-20,2025-11-07,测试,0,todo,测试组,风控规则引擎;小程序适配,
性能压测,2025-10-27,2025-11-07,测试,0,todo,测试组,风控规则引擎,
UAT 验收,2025-11-10,2025-11-21,发布,0,todo,产品,集成测试,
灰度发布,2025-11-24,2025-11-28,发布,0,todo,运维,UAT 验收,
V3.0 全量,2025-12-01,2025-12-01,发布,0,todo,运维,灰度发布,milestone
数据迁移方案,2025-08-18,2025-09-05,数据,100,done,吴用,技术方案评审,
历史订单迁移,2025-09-08,2025-10-03,数据,60,active,吴用,数据迁移方案,
对账平台升级,2025-09-15,2025-10-31,数据,20,active,吴用,历史订单迁移,
安全编码规范,2025-08-11,2025-08-22,安全,100,done,安全组,,
渗透测试,2025-11-03,2025-11-14,安全,0,todo,安全组,集成测试,
客服话术培训,2025-11-10,2025-11-21,运营,0,todo,运营,UAT 验收,
监控告警接入,2025-10-13,2025-10-31,运维,15,active,运维,风控规则引擎,
回滚预案演练,2025-11-17,2025-11-21,运维,0,todo,运维,监控告警接入,
商户结算联调,2025-09-29,2025-10-24,后端,35,active,李倩,支付网关改造,
发票服务改造,2025-10-13,2025-11-14,后端,0,todo,王猛,商户结算联调,
文档与 API 更新,2025-10-27,2025-11-14,平台,0,todo,平台,发票服务改造,
渠道通知,2025-11-24,2025-11-28,运营,0,todo,运营,回滚预案演练,
